# 需求变更开发进度

Schedule from MS Project, 2009-11-27 to 2009-12-23, A marks actual dates.
asiainfo

## Calendars

- 标准: Mon-Fri 08:00-12:00, 13:00-17:00; Sat-Sun off. Exceptions (off unless hours are given): 2009-11-28 to 2009-11-29 08:00-12:00, 13:00-17:00, 2009-12-05 08:00-12:00, 13:00-17:00, 2009-12-12 to 2009-12-13 08:00-12:00, 13:00-17:00, 2009-12-19 to 2009-12-20 08:00-12:00, 13:00-17:00.

## Schedule

| ID | WBS | Task | Duration | Start | Finish | Complete | Total slack | Constraint | Text1 |
| --- | --- | --- | --- | --- | --- | --- | --- | --- | --- |
| 1 | 1 | **登陆页面修改** | 1d | 2009-11-27 A | 2009-11-27 A | 100% |  |  | 已经完成 |
| 2 | 1.1 | 登陆页面修改 | 1d | 2009-11-27 A | 2009-11-27 A | 100% |  | start no earlier than 2009-11-27 | 已经完成 |
| 3 | 2 | **菜单/权限调整** | 2d | 2009-11-28 | 2009-11-29 |  | 21d |  |  |
| 4 | 2.1 | 菜单/权限调整 | 2d | 2009-11-28 | 2009-11-29 |  | 3d | start no earlier than 2009-11-28 |  |
| 5 | 3 | **首页** | 5d? | 2009-11-30 | 2009-12-04 |  | 16d |  |  |
| 6 | 3.1 | 正在召开的会议 | 1d | 2009-11-30 | 2009-11-30 |  | 2d | start no earlier than 2009-11-30 |  |
| 7 | 3.2 | 近一段时间的会议安排 | 2d | 2009-12-01 | 2009-12-02 |  | 2d | start no earlier than 2009-12-01 |  |
| 8 | 3.3 | 会议预约安排图 | 1d? | 2009-12-03 | 2009-12-03 |  | 1d | start no earlier than 2009-12-03 |  |
| 9 | 3.4 | 弹出窗口的公告栏 | 1d? | 2009-12-04 | 2009-12-04 |  | 7d | start no earlier than 2009-12-04 |  |
| 10 | 4 | **系统资源浏览** | 12d? | 2009-12-05 | 2009-12-17 |  | 4d |  |  |
| 11 | 4.1 | MCU占用点数波动图 | 3d | 2009-12-05 | 2009-12-08 |  | 4d | start no earlier than 2009-12-05 |  |
| 12 | 4.2 | 用户使用次数排行 | 2d | 2009-12-09 | 2009-12-10 |  | 2d | start no earlier than 2009-12-09 |  |
| 13 | 4.3 | 会议统计次数排行 | 2d | 2009-12-11 | 2009-12-12 |  | 5d | start no earlier than 2009-12-11 |  |
| 14 | 4.4 | 各类型会议时间长度统计 | 2d | 2009-12-13 | 2009-12-14 |  | 3d | start no earlier than 2009-12-13 |  |
| 15 | 4.5 | 各会场会议时间长度统计 | 1d? | 2009-12-15 | 2009-12-15 |  | 2d | start no earlier than 2009-12-15 |  |
| 16 | 4.6 | 会议持续时间前10名统计 | 2d | 2009-12-16 | 2009-12-17 |  | 4d | start no earlier than 2009-12-16 |  |
| 17 | 5 | **个人会议预约** | 5d? | 2009-12-18 | 2009-12-22 |  | 1d |  |  |
| 18 | 5.1 | 预约会议表单项变更 | 1d? | 2009-12-18 | 2009-12-18 |  | 3d | start no earlier than 2009-12-18 |  |
| 19 | 5.2 | 表单存为表单模板 | 1d? | 2009-12-19 | 2009-12-19 |  | 2d | start no earlier than 2009-12-19 |  |
| 20 | 5.3 | 导出表单为文本文件 | 2d | 2009-12-20 | 2009-12-21 |  | 2d | start no earlier than 2009-12-20 |  |
| 21 | 5.4 | 为用户设定默认主会场及限制可选会场范围 | 1d? | 2009-12-22 | 2009-12-22 |  | 1d | start no earlier than 2009-12-22 |  |
| 22 | 6 | **用户个人信息管理** | 1d? | 2009-12-23 | 2009-12-23 |  | 0d |  |  |
| 23 | 6.1 | 用户个人信息管理 | 1d? | 2009-12-23 | 2009-12-23 |  | 0d | start no earlier than 2009-12-23 |  |
